# ПЗ1_Вариант1_Стандарт

Schedule from MS Project, 2026-10-02 to 2027-12-10, costs in ₽.

## Calendars

- Стандартный: Mon-Fri 09:00-13:00, 14:00-18:00; Sat-Sun off. Exceptions (off unless hours are given): 2026-11-07 (День Октябрьской революции), 2026-12-25 (Рождество Христово (католическое)), 2027-01-01 (Новый Год), 2027-01-07 (православное), 2027-03-08 (День женщин), 2027-04-20 (Перенос рабочего дня (выходной)), 2027-04-21 (Радуница), 2027-05-01 (Праздник труда), 2027-05-09 (День Победы), 2027-07-03 (День Независимости Республики Беларусь).

## Resources

| Resource | Unit | Rate | Cost per use |
| --- | --- | --- | --- |
| Архитектор |  |  | 550000 |
| МУП "Горгаз" |  |  | 700000 |
| МУП "Водоканал" |  |  | 500000 |
| АО "Водолей" |  |  | 500000 |
| Рабочий1 |  | 1250 |  |
| Рабочий2 |  | 1250 |  |
| Рабочий3 |  | 1250 |  |
| Подсобник1 |  | 500 |  |
| Подсобник2 |  | 500 |  |
| Трактор |  |  | 70000 |
| Плотник1 |  | 18750 | 75000 |
| Плотник2 |  | 1875 | 75000 |
| АО "Неопласт" |  |  | 1200000 |
| Водопроводчик1 |  | 1000 |  |
| Водопроводчик2 |  | 1000 |  |
| Электрик |  | 1250 |  |
| АО "Газовик" |  |  | 250000 |
| ООО "Потолки" |  |  | 1500000 |
| Песок | т | 5000 |  |
| Щебень | т | 6000 |  |
| Цемент | т | 780000 | 250000 |
| Кирпич | шт. | 70 |  |
| Брус |  |  | 250000 |
| Доска обрезная | м2 | 70000 |  |
| Доска необрезная | м2 | 50000 |  |
| Шифер |  |  | 400000 |
| Электропровод |  |  | 150000 |
| Электросчетчик |  |  | 50000 |
| Труба водопроводная |  |  | 350000 |
| Труба канализационная |  |  | 300000 |
| Штукатурка |  |  | 1500000 |
| Потолок | м2 | 1500 |  |
| Окно |  | 100000 |  |
| Дверь наружная |  |  | 200000 |
| Труба отопительная |  |  | 200000 |
| Котел |  |  | 400000 |
| Печь газовая |  |  | 200000 |
| Ванна |  | 450000 |  |
| Унитаз компакт |  | 200000 |  |
| Раковина |  | 160000 |  |
| Кран |  | 70000 |  |
| Паркет | м2 | 5500 |  |
| Труба газовая |  |  | 500000 |
| Дверь внутренняя |  | 90000 |  |
| Доставка |  |  |  |

## Schedule

| ID | WBS | Task | Type | Duration | Start | Finish | Predecessors | Total slack | Resources | Work | Cost |
| --- | --- | --- | --- | --- | --- | --- | --- | --- | --- | --- | --- |
| 1 | 1 | Начало проекта | milestone | 0d | 2026-10-02 | 2026-10-02 |  | 0d |  |  |  |
| 2 | 2 | **Утверждение проектов** |  | 101d | 2026-10-02 | 2027-02-24 |  | 0d |  | 1800h | 2,250,000 |
| 3 | 2.1 | Начало утверждения проектов |  | 1d | 2026-10-02 | 2026-10-02 | 1 | 0d |  |  |  |
| 4 | 2.2 | Утверждение проекта на строительство |  | 90d | 2026-10-05 | 2027-02-10 | 3 | 10d | Архитектор | 720h | 550,000 |
| 5 | 2.3 | Утверждение проекта на газ |  | 100d | 2026-10-05 | 2027-02-24 | 3 | 0d | МУП "Горгаз" | 480h | 700,000 |
| 6 | 2.4 | Утверждение проекта на водопровод и канализацию |  | 60d | 2026-10-05 | 2026-12-28 | 3 | 40d | МУП "Водоканал" | 240h | 500,000 |
| 7 | 2.5 | Утверждение проета на отопление |  | 90d | 2026-10-05 | 2027-02-10 | 3 | 10d | АО "Водолей" | 360h | 500,000 |
| 8 | 2.6 | Проекты утверждены | milestone | 0d | 2027-02-24 | 2027-02-24 | 4, 5, 6, 7 | 0d |  |  |  |
| 9 | 3 | **Строительство фундамента** |  | 47d | 2027-02-25 | 2027-05-05 |  | 0d |  | 680h | 3,350,000 |
| 10 | 3.1 | Начало закладки фундамента |  | 2d | 2027-02-25 | 2027-02-26 | 8 | 0d |  |  |  |
| 11 | 3.2 | Рытье траншей |  | 10d | 2027-03-01 | 2027-03-15 | 10 | 0d | Рабочий1; Рабочий2; Рабочий3; Подсобник1; Подсобник2; Трактор | 480h | 450,000 |
| 12 | 3.3 | Заливка фундамента |  | 5d | 2027-03-16 | 2027-03-22 | 11 | 0d | Рабочий1; Рабочий2; Рабочий3; Подсобник1; Подсобник2; Песок [10 т]; Щебень [10 т]; Цемент [2.5 т]; Доска необрезная [3 м2]; Доставка [0.1%] | 200h | 2,900,000 |
| 13 | 3.4 | Фундамент завершен | milestone | 0d | 2027-05-05 | 2027-05-05 | 12FS+30d | 0d |  |  |  |
| 14 | 4 | **Каркас и крыша** |  | 106d | 2027-05-06 | 2027-09-30 |  | 0d |  | 3616h | 20,895,000 |
| 15 | 4.1 | Начало каркаса |  | 1d | 2027-05-06 | 2027-05-06 | 13 | 0d |  |  |  |
| 16 | 4.2 | Кладка стен |  | 60d | 2027-05-07 | 2027-07-29 | 15 | 0d | Рабочий1; Рабочий2; Рабочий3; Подсобник1; Подсобник2; Кирпич [70000 шт.]; Песок [6 т]; Цемент [2 т]; Доставка [0.1%] | 2400h | 9,270,000 |
| 17 | 4.3 | Перекрытие стен |  | 15d | 2027-07-30 | 2027-08-19 | 16 | 0d | Рабочий1; Рабочий2; Рабочий3; Подсобник1; Подсобник2; Брус [1500%]; Доска обрезная [7 м2]; Доставка [0.1%] | 600h | 1,460,000 |
| 18 | 4.4 | Установка крыши |  | 30d | 2027-08-20 | 2027-09-30 | 17 | 0d | Плотник1; Плотник2; Доска необрезная [10 м2]; Шифер [2000%]; Доставка [0.1%] | 480h | 6,120,000 |
| 19 | 4.5 | Установка наружных дверей и окон |  | 7d | 2027-08-20 | 2027-08-30 | 17 | 28d | АО "Неопласт"; Окно [900%]; Дверь наружная | 56h | 2,300,000 |
| 20 | 4.6 | Установка полов |  | 5d | 2027-08-20 | 2027-08-26 | 17 | 25d | Плотник1; Плотник2; Доска обрезная [10 м2]; Доставка [0.1%] | 80h | 1,745,000 |
| 21 | 4.7 | Каркас готов | milestone | 0d | 2027-09-30 | 2027-09-30 | 18, 19, 20 | 0d |  |  |  |
| 22 | 5 | **Коммуникации** |  | 11d | 2027-10-01 | 2027-10-15 |  | 0d |  | 240h | 1,810,000 |
| 23 | 5.1 | Начало установки коммуникаций |  | 1d | 2027-10-01 | 2027-10-01 | 21 | 0d |  |  |  |
| 24 | 5.2 | Проведение и подключение водопровода и канализации |  | 10d | 2027-10-04 | 2027-10-15 | 23 | 0d | Водопроводчик1; Водопроводчик2; Труба водопроводная; Труба канализационная | 160h | 810,000 |
| 25 | 5.3 | Установка и подключение электропроводки |  | 5d | 2027-10-04 | 2027-10-08 | 23 | 5d | Электрик; Электросчетчик; Электропровод [10000%] | 40h | 250,000 |
| 26 | 5.4 | Установка и подключение газовых коммуникаций |  | 5d | 2027-10-04 | 2027-10-08 | 23 | 5d | АО "Газовик"; Труба газовая | 40h | 750,000 |
| 27 | 5.5 | Коммуникации готовы | milestone | 0d | 2027-10-15 | 2027-10-15 | 24, 25, 26 | 0d |  |  |  |

| ID | WBS | Task | Type | Duration | Start | Finish | Predecessors | Total slack | Constraint | Resources | Work | Cost |
| --- | --- | --- | --- | --- | --- | --- | --- | --- | --- | --- | --- | --- |
| 28 | 6 | **Внутренняя отделка** |  | 40d | 2027-10-15 | 2027-12-10 |  | 0d |  |  | 1160h | 10,464,000 |
| 29 | 6.1 | Начало отделки | milestone | 0d | 2027-10-15 | 2027-10-15 | 27 | 0d |  |  |  |  |
| 30 | 6.2 | Внутренние двери |  | 10d | 2027-10-18 | 2027-10-29 | 29 | 0d |  | Плотник1; Плотник2; Дверь внутренняя [1000%]; Доставка [0.1%] | 160h | 2,800,000 |
| 31 | 6.3 | Навесные потолки |  | 5d | 2027-11-01 | 2027-11-05 | 30 | 5d |  | Потолок [190 м2]; ООО "Потолки" | 40h | 1,785,000 |
| 32 | 6.4 | Отделка стен |  | 3d | 2027-11-17 | 2027-11-19 | 30 | 0d | as late as possible | Рабочий1; Рабочий2; Рабочий3; Подсобник1; Подсобник2; Штукатурка [10000%] | 120h | 1,614,000 |
| 33 | 6.5 | Монтаж отопления |  | 10d | 2027-11-01 | 2027-11-12 | 30 | 0d |  | Водопроводчик1; Водопроводчик2; Труба отопительная | 160h | 360,000 |
| 34 | 6.6 | Установка оборудования, приборов, сантехники |  | 5d | 2027-11-15 | 2027-11-19 | 31, 33 | 0d |  | Водопроводчик1; Водопроводчик2; Котел; Печь газовая; Ванна; Унитаз компакт [200%]; Раковина [300%]; Кран [400%] | 80h | 2,290,000 |
| 35 | 6.7 | Настил полов |  | 15d | 2027-11-22 | 2027-12-10 | 32, 34 | 0d |  | Рабочий1; Рабочий2; Рабочий3; Подсобник1; Подсобник2; Паркет [190 м2] | 600h | 1,615,000 |
| 36 | 6.8 | Конец отделки | milestone | 0d | 2027-12-10 | 2027-12-10 | 35 | 0d |  |  |  |  |
| 37 | 7 | Конец проекта | milestone | 0d | 2027-12-10 | 2027-12-10 | 36 | 0d |  |  |  |  |
